How a schedule from MS Project changed from version to version. A marks actual dates.

## Version 1 (saved 2017-03-30, file 3PL.mpp)

Note of the change: WMS

| ID | WBS | Task | Duration | Start | Finish | Predecessors | Total float | Constraint |
| --- | --- | --- | --- | --- | --- | --- | --- | --- |
| 1 | 1 | **发货单** | 0.5d? | 2017-03-30 | 2017-03-30 |  | 15.5d |  |
| 2 |  | LES 发货单列表 | 0.5d? | 2017-03-30 | 2017-03-30 |  | 15.5d | start no earlier than 2017-03-30 |
| 3 |  | 手工发货单列表 | 0.5d? | 2017-03-30 | 2017-03-30 |  | 15.5d | start no earlier than 2017-03-30 |
| 4 | 2 | **收货单** | 1.5d | 2017-03-29 | 2017-03-30 |  | 15.5d |  |
| 5 |  | 手工收货单列表 | 0.5d | 2017-03-29 | 2017-03-29 |  | 16.5d |  |
| 6 |  | LES收货单列表 | 0.5d | 2017-03-30 | 2017-03-30 |  | 15.5d | start no earlier than 2017-03-30 |
| 7 | 3 | **内部接口定义及确认** | 2d? | 2017-03-30 | 2017-03-31 |  | 14d |  |
| 8 |  | 运行报错处理 | 1d? | 2017-03-30 | 2017-03-30 |  | 15d | start no earlier than 2017-03-30 |
| 9 |  | 工作计划安排确认 | 1d? | 2017-03-30 | 2017-03-30 |  | 15d | start no earlier than 2017-03-30 |
| 10 |  | 内部接口定义及确认 | 1d? | 2017-03-31 | 2017-03-31 | 8 | 14d | start no earlier than 2017-03-31 |
| 11 | 4 | **库存单据** | 2d? | 2017-03-31 | 2017-04-01 |  | 13d |  |
| 12 |  | 库存调整申请单 | 1d? | 2017-03-31 | 2017-03-31 |  | 14d | start no earlier than 2017-03-31 |
| 13 |  | 盘库申请单 | 1d? | 2017-03-31 | 2017-03-31 |  | 14d | start no earlier than 2017-03-31 |
| 14 |  | 盘库清单 | 1d? | 2017-04-01 | 2017-04-01 |  | 13d | start no earlier than 2017-04-01 |
| 15 |  | 移库申请单 | 1d? | 2017-04-01 | 2017-04-01 |  | 13d | start no earlier than 2017-04-01 |
| 16 | 5 | **发货单** | 0.5d | 2017-03-31 | 2017-03-31 |  | 14.5d |  |
| 17 |  | LES 生成收货单 | 0.5d | 2017-03-31 | 2017-03-31 |  | 14.5d | start no earlier than 2017-03-31 |
| 18 |  | LES 生成货货单 | 0.5d | 2017-03-31 | 2017-03-31 |  | 14.5d | start no earlier than 2017-03-31 |
| 19 | 6 | **台账** | 2d? | 2017-04-05 | 2017-04-06 |  | 0d |  |
| 20 |  | 零件库存查询 | 1d? | 2017-04-05 | 2017-04-05 |  | 12d | start no earlier than 2017-04-05 |
| 21 |  | 台账初始化代码调整 | 2d | 2017-04-05 | 2017-04-06 |  |  | start no earlier than 2017-04-05 |
| 22 |  | 积累问题处理 | 1d? | 2017-04-06 | 2017-04-06 |  | 11d | start no earlier than 2017-04-06 |
| 23 | 7 | **人员-标签** | 1d? | 2017-04-05 | 2017-04-05 |  | 12d |  |
| 24 |  | 人员-标签关系 | 1d? | 2017-04-05 | 2017-04-05 |  | 12d | start no earlier than 2017-04-05 |
| 25 |  | 根据标签查询登录人接口 | 1d? | 2017-04-05 | 2017-04-05 |  | 12d | start no earlier than 2017-04-05 |
| 26 | 8 | **任务流程定义** | 1d? | 2017-04-06 | 2017-04-06 |  | 11d |  |
| 27 |  | 任务流程定义 | 1d? | 2017-04-06 | 2017-04-06 |  | 11d | start no earlier than 2017-04-06 |
| 28 |  | 根据收货单生成收货任务 | 3d | 2017-04-01 | 2017-04-06 |  | 7d | start no earlier than 2017-04-01 |
| 29 |  | 预拣货任务定义 | 1d? | 2017-04-07 | 2017-04-07 |  | 10d | start no earlier than 2017-04-07 |
| 30 | 11 | **运单基础数据明细** | 1d? | 2017-04-07 | 2017-04-07 |  | 10d |  |
| 31 |  | 车辆信息 | 1d? | 2017-04-07 | 2017-04-07 |  | 10d | start no earlier than 2017-04-07 |
| 32 |  | 运单信息 | 1d? | 2017-04-07 | 2017-04-07 |  | 10d | start no earlier than 2017-04-07 |
| 33 |  | 运单信息明细 | 1d? | 2017-04-07 | 2017-04-07 |  | 10d | start no earlier than 2017-04-07 |
| 34 | 12 | **根据单据生成任务** | 9d? | 2017-04-07 | 2017-04-19 |  | 2d |  |
| 35 |  | 根据收货单生成上架任务 | 4d? | 2017-04-10 | 2017-04-13 |  | 6d | finish no earlier than 2017-04-13 |
| 36 |  | 根据盘库申请单生成盘库任务 | 4d? | 2017-04-10 | 2017-04-13 |  | 6d | finish no earlier than 2017-04-13 |
| 37 |  | 根据预拣货定义生成预拣货任务 | 4d? | 2017-04-07 | 2017-04-12 |  | 7d | finish no earlier than 2017-04-12 |
| 38 |  | 根据发货单,预拣货单生成发货任务 | 4d? | 2017-04-14 | 2017-04-19 |  | 2d | finish no earlier than 2017-04-19 |
| 39 |  | 根据移库申请单生成移库任务 | 1d? | 2017-04-14 | 2017-04-14 |  | 5d | start no earlier than 2017-04-14 |
| 40 |  | 取消任务,并新增任务 | 2d? | 2017-04-13 | 2017-04-14 |  | 5d | finish no earlier than 2017-04-14 |
| 41 | 13 | **根据任务变更数据** | 4d? | 2017-04-17 | 2017-04-20 |  | 1d |  |
| 42 |  | 根据收货任务变更台账,零件 | 1d? | 2017-04-17 | 2017-04-17 |  | 4d | start no earlier than 2017-04-17 |
| 43 |  | 根据上货任务变更库存 | 1d? | 2017-04-18 | 2017-04-18 |  | 3d | start no earlier than 2017-04-18 |
| 44 |  | 根据盘点任务生成盘库清单 | 1d? | 2017-04-19 | 2017-04-19 |  | 2d | start no earlier than 2017-04-19 |
| 45 |  | 根据预拣货变更库存 | 1d? | 2017-04-17 | 2017-04-17 |  | 4d | start no earlier than 2017-04-17 |
| 46 |  | 根据发货任务变更库存 | 1d? | 2017-04-20 | 2017-04-20 |  | 1d | start no earlier than 2017-04-20 |
| 47 |  | 根据库存调整申请单变更库存 | 1d? | 2017-04-20 | 2017-04-20 |  | 1d | start no earlier than 2017-04-20 |
| 48 |  | 手持接口的实现及单元测试 | 4d? | 2017-04-18 | 2017-04-21 |  | 0d | finish no earlier than 2017-04-21 |
| 49 |  | 已完成功能的测试和调整 | 1d? | 2017-04-21 | 2017-04-21 |  | 0d | start no earlier than 2017-04-21 |

## Version 2 (saved 2017-04-14, file 3PL(2017.04.14).mpp)

Note of the change: WMS

Last finish stays 2017-04-21. Complete tasks 0 → 13.

Changed:

| ID | Task | Start | Finish | Complete | Total float |
| --- | --- | --- | --- | --- | --- |
| 7 | **内部接口定义及确认** | 2017-03-30 A |  | 0% → 33% |  |
| 10 | 内部接口定义及确认 | 2017-03-31 A | 2017-03-31 A | 0% → 100% | 14d → none |
| 11 | **库存单据** | 2017-03-31 A | 2017-04-01 A | 0% → 100% | 13d → none |
| 12 | 库存调整申请单 | 2017-03-31 A | 2017-03-31 A | 0% → 100% | 14d → none |
| 13 | 盘库申请单 | 2017-03-31 A | 2017-03-31 A | 0% → 100% | 14d → none |
| 14 | 盘库清单 | 2017-04-01 A | 2017-04-01 A | 0% → 100% | 13d → none |
| 15 | 移库申请单 | 2017-04-01 A | 2017-04-01 A | 0% → 100% | 13d → none |
| 16 | **发货单** | 2017-03-31 A | 2017-03-31 A | 0% → 100% | 14.5d → none |
| 17 | LES 生成收货单 | 2017-03-31 A | 2017-03-31 A | 0% → 100% | 14.5d → none |
| 18 | LES 生成货货单 | 2017-03-31 A | 2017-03-31 A | 0% → 100% | 14.5d → none |
| 19 | **台账** | 2017-04-05 A |  | 0% → 81% | 0d → 11d |
| 20 | 零件库存查询 | 2017-04-05 A |  | 0% → 75% |  |
| 21 | 台账初始化代码调整 | 2017-04-05 A |  | 0% → 75% |  |
| 22 | 积累问题处理 | 2017-04-06 A | 2017-04-06 A | 0% → 100% | 11d → none |
| 23 | **人员-标签** | 2017-04-05 A |  | 0% → 38% |  |
| 24 | 人员-标签关系 | 2017-04-05 A |  | 0% → 75% |  |
| 26 | **任务流程定义** | 2017-04-06 A | 2017-04-06 A | 0% → 100% | 11d → none |
| 27 | 任务流程定义 | 2017-04-06 A | 2017-04-06 A | 0% → 100% | 11d → none |
| 28 | 根据收货单生成收货任务 | 2017-04-01 A |  | 0% → 75% | 7d → 11d |
| 29 | 预拣货任务定义 | 2017-04-07 A | 2017-04-07 A | 0% → 100% | 10d → none |
| 30 | **运单基础数据明细** | 2017-04-07 A | 2017-04-07 A | 0% → 100% | 10d → none |
| 31 | 车辆信息 | 2017-04-07 A | 2017-04-07 A | 0% → 100% | 10d → none |
| 32 | 运单信息 | 2017-04-07 A | 2017-04-07 A | 0% → 100% | 10d → none |
| 33 | 运单信息明细 | 2017-04-07 A | 2017-04-07 A | 0% → 100% | 10d → none |
| 34 | **根据单据生成任务** | 2017-04-07 A |  | 0% → 46% |  |
| 35 | 根据收货单生成上架任务 | 2017-04-10 A |  | 0% → 50% |  |
| 36 | 根据盘库申请单生成盘库任务 | 2017-04-10 A |  | 0% → 75% |  |
| 37 | 根据预拣货定义生成预拣货任务 | 2017-04-07 A |  | 0% → 50% |  |
| 39 | 根据移库申请单生成移库任务 | 2017-04-14 A |  | 0% → 25% |  |
| 40 | 取消任务,并新增任务 | 2017-04-13 A |  | 0% → 75% |  |
